# Simple Project Plan

Schedule from MS Project, 2017-07-07 to 2017-10-13, A marks actual dates.

## Calendars

- Standard: Mon-Fri 08:00-12:00, 13:00-17:00; Sat-Sun off.

## Resources

| Resource |
| --- |
| 吴小刚 |
| 李林 |

## Schedule

| ID | WBS | Task | Type | Duration | Start | Finish | Predecessors | Complete | Remaining | Actual start | Actual finish | Constraint | Resources | Work | Actual work |
| --- | --- | --- | --- | --- | --- | --- | --- | --- | --- | --- | --- | --- | --- | --- | --- |
| 1 | 1 | **计划** |  | 4d | 2017-09-18 | 2017-09-21 |  | 74% | 1.04d | 2017-07-07 |  |  |  | 2208h | 1904.61h |
| 2 | 1.1 | 架构搭建 | manual | 10d | 2017-07-07 A | 2017-07-20 |  | 8% | 9.25d |  |  |  | 吴小刚 | 80h | 6h |
| 3 | 1.2 | **通用工具** |  | 4d | 2017-08-07 A | 2017-08-10 |  | 31% | 2.77d |  |  |  | 吴小刚 | 176h | 48h |
| 4 | 1.2.1 | 短信 | manual | 4d | 2017-08-07 A | 2017-08-10 |  | 50% | 2d |  |  |  | 吴小刚 | 32h | 16h |
| 5 | 1.2.2 | 邮件 | manual | 2d | 2017-08-11 A | 2017-08-14 |  | 50% | 1d |  |  |  | 吴小刚 | 16h | 8h |
| 6 | 1.2.3 | excel处理 | manual | 2d | 2017-08-15 A | 2017-08-16 |  | 50% | 1d |  |  |  | 吴小刚 | 16h | 8h |
| 7 | 1.2.4 | 规则引擎 | manual | 5d | 2017-09-25 | 2017-09-29 |  |  |  |  |  |  | 李林; 吴小刚 | 80h |  |
| 8 | 1.3 | **用户/员工/系统管理** |  | 37d | 2017-07-07 A | 2017-08-28 |  | 96% | 1.32d |  |  |  | 吴小刚 | 832h | 822h |
| 9 | 1.3.1 | 需求分析 |  | 2d | 2017-07-07 A | 2017-07-10 A |  | 100% |  |  |  |  | 吴小刚 | 16h | 16h |
| 10 | 1.3.2 | 方案设计 |  | 3d | 2017-07-13 A | 2017-07-17 A | 9 | 100% |  |  |  |  | 吴小刚 | 24h | 24h |
| 11 | 1.3.3 | 数据模型 |  | 4d | 2017-07-19 A | 2017-07-24 A | 9 | 100% |  |  |  |  | 吴小刚 | 32h | 32h |
| 12 | 1.3.4 | api文档编写 | manual | 5d | 2017-09-11 A | 2017-09-15 |  | 75% | 1.25d |  |  |  | 吴小刚 | 40h | 30h |
| 13 | 1.3.5 | **功能开发** |  | 25d | 2017-07-25 A | 2017-08-28 |  | 100% |  |  | 2017-08-29 |  | 吴小刚 | 424h | 424h |
| 14 | 1.3.5.1 | 登录服务 |  | 2d | 2017-07-25 A | 2017-07-26 A | 9, 10, 11, 24 | 100% |  |  |  |  | 吴小刚 | 16h | 16h |
| 15 | 1.3.5.2 | 系统域管理 |  | 2d | 2017-07-26 A | 2017-07-27 A | 9, 10, 11, 24 | 100% |  |  |  |  | 吴小刚 | 16h | 16h |
| 16 | 1.3.5.3 | 组织机构 | manual | 3d | 2017-07-28 A | 2017-08-01 A | 9, 10, 11, 24 | 100% |  |  |  | finish no earlier than 2017-07-28 | 吴小刚 | 24h | 24h |
| 17 | 1.3.5.4 | **用户管理** |  | 4d | 2017-08-02 A | 2017-08-07 | 9, 10, 11, 24 | 100% |  |  | 2017-08-09 |  | 吴小刚 | 48h | 48h |
| 18 | 1.3.5.4.1 | 批量导入 | manual | 2d | 2017-08-08 A | 2017-08-09 A | 9, 10, 11, 24 | 100% |  |  |  |  | 吴小刚 | 16h | 16h |
| 19 | 1.3.5.5 | 功能(权限)管理 |  | 3d | 2017-08-14 A | 2017-08-16 A | 9, 10, 11, 24 | 100% |  |  |  |  | 吴小刚 | 24h | 24h |
| 20 | 1.3.5.6 | 角色管理 | manual | 2d | 2017-08-07 A | 2017-08-08 A | 9, 10, 11, 24 | 100% |  |  |  |  | 吴小刚 | 16h | 16h |
| 21 | 1.3.5.7 | 菜单管理 |  | 2d | 2017-08-17 A | 2017-08-18 A | 9, 10, 11, 24 | 100% |  |  |  |  | 吴小刚 | 16h | 16h |
| 22 | 1.3.5.8 | 数据字典管理 |  | 2d | 2017-08-23 A | 2017-08-24 A | 9, 10, 11, 24 | 100% |  |  |  |  | 吴小刚 | 16h | 16h |
| 23 | 1.3.5.9 | **日志管理** |  | 3d | 2017-08-25 | 2017-08-29 A | 9, 10, 11 | 100% |  | 2017-08-21 |  |  | 吴小刚 | 48h | 48h |
| 24 | 1.3.5.9.1 | 自定义日志注解 | manual | 1d | 2017-08-21 A | 2017-08-21 A |  | 100% |  |  |  |  | 吴小刚 | 8h | 8h |
| 25 | 1.3.5.9.2 | 登录日志 | manual | 1d | 2017-08-22 A | 2017-08-22 A | 9, 10, 11, 24 | 100% |  |  |  |  | 吴小刚 | 8h | 8h |
| 26 | 1.3.5.9.3 | 操作日志 | manual | 1d | 2017-08-23 A | 2017-08-23 A | 9, 10, 11, 24 | 100% |  |  |  |  | 吴小刚 | 8h | 8h |

Notes:
- 1: 这是摘要任务。使用摘要任务以帮助您在节中组织项目。

| ID | WBS | Task | Type | Duration | Start | Finish | Complete | Remaining | Actual start | Actual finish | Total slack | Resources | Work | Actual work |
| --- | --- | --- | --- | --- | --- | --- | --- | --- | --- | --- | --- | --- | --- | --- |
| 27 | 1.4 | **用户/会员** |  | 22d | 2017-09-04 | 2017-10-03 | 80% | 4.4d | 2017-09-01 |  |  | 吴小刚 | 672h | 596.61h |
| 28 | 1.4.1 | 需求分析 | manual | 2d | 2017-09-13 A | 2017-09-14 A | 100% |  |  |  |  | 吴小刚 | 16h | 16h |
| 29 | 1.4.2 | 方案设计 | manual | 3d | 2017-09-13 A | 2017-09-15 A | 100% |  |  |  |  | 吴小刚 | 24h | 24h |
| 30 | 1.4.3 | 数据模型 | manual | 4d | 2017-09-13 A | 2017-09-18 A | 100% |  |  |  |  | 吴小刚 | 32h | 32h |
| 31 | 1.4.4 | api文档编写 | manual | 5d | 2017-09-18 | 2017-09-22 |  |  |  |  |  | 吴小刚 | 40h |  |
| 32 | 1.4.5 | **功能开发** |  | 14d | 2017-09-01 A | 2017-09-20 | 90% | 1.33d |  |  | 0d | 吴小刚 | 384h | 348.61h |
| 33 | 1.4.5.1 | **前台** |  | 6d | 2017-09-01 A | 2017-09-08 | 82% | 1.09d |  |  | 0d | 吴小刚 | 152h | 127.27h |
| 34 | 1.4.5.1.1 | 注册 | manual | 1d | 2017-09-04 A | 2017-09-04 A | 100% |  |  |  |  | 吴小刚 | 8h | 8h |
| 35 | 1.4.5.1.2 | 登录/登出+日志 | manual | 1d | 2017-09-01 A | 2017-09-01 A | 100% |  |  |  |  | 吴小刚 | 8h | 8h |
| 36 | 1.4.5.1.3 | **找回密码** |  | 1d | 2017-09-01 A | 2017-09-01 A | 100% |  |  |  |  | 吴小刚 | 24h | 24h |
| 37 | 1.4.5.1.3.1 | 密保手机找回 |  | 1d | 2017-09-01 A | 2017-09-01 A | 100% |  |  |  |  | 吴小刚 | 8h | 8h |
| 38 | 1.4.5.1.3.2 | 密保邮箱找回 | manual | 1d | 2017-09-01 A | 2017-09-01 A | 100% |  |  |  |  | 吴小刚 | 8h | 8h |
| 39 | 1.4.5.1.4 | **个人设置** |  | 5d | 2017-09-04 A | 2017-09-08 | 71% | 1.43d |  |  | 0d |  | 64h | 48h |
| 40 | 1.4.5.1.4.1 | 实名认证 | manual | 1d | 2017-09-07 A | 2017-09-07 A | 100% |  |  |  |  | 吴小刚 | 8h | 8h |
| 41 | 1.4.5.1.4.2 | **信息完善** |  | 1d | 2017-09-08 A | 2017-09-08 |  | 1d |  |  |  | 吴小刚 | 24h | 8h |
| 42 | 1.4.5.1.4.2.1 | 基本信息 | manual | 1d | 2017-09-08 | 2017-09-08 |  |  |  |  |  | 吴小刚 | 8h |  |
| 43 | 1.4.5.1.4.2.2 | 模板扩展信息 | manual | 1d | 2017-09-08 | 2017-09-08 |  |  |  |  |  | 吴小刚 | 8h |  |
| 44 | 1.4.5.1.4.3 | 登录密码-设置/修改 | manual | 1d | 2017-09-04 A | 2017-09-04 A | 100% |  |  |  |  | 吴小刚 | 8h | 8h |
| 45 | 1.4.5.1.4.4 | 手机号码-绑定/修改 | manual | 1d | 2017-09-06 A | 2017-09-06 A | 100% |  |  |  |  | 吴小刚 | 8h | 8h |
| 46 | 1.4.5.1.4.5 | 交易密码-设置/修改/找回 | manual | 1d | 2017-09-06 A | 2017-09-06 A | 100% |  |  |  |  | 吴小刚 | 8h | 8h |
| 47 | 1.4.5.1.4.6 | 电子邮箱-绑定/修改 | manual | 1d | 2017-09-07 A | 2017-09-07 A | 100% |  |  |  |  | 吴小刚 | 8h | 8h |
| 48 | 1.4.5.2 | **后台** |  | 13d | 2017-09-04 A | 2017-09-20 | 100% |  |  | 2017-09-06 |  |  | 120h | 120h |
| 49 | 1.4.5.2.1 | **客户** |  | 3d | 2017-09-04 A | 2017-09-06 A | 100% |  |  |  |  | 吴小刚 | 88h | 88h |
| 50 | 1.4.5.2.1.1 | **实名认证** |  | 1d | 2017-09-04 A | 2017-09-04 A | 100% |  |  |  |  | 吴小刚 | 16h | 16h |
| 51 | 1.4.5.2.1.1.1 | 客户实名认证日志 | manual | 1d | 2017-09-04 A | 2017-09-04 A | 100% |  |  |  |  | 吴小刚 | 8h | 8h |
| 52 | 1.4.5.2.1.2 | 会员信息 | manual | 1d | 2017-09-04 A | 2017-09-04 A | 100% |  |  |  |  | 吴小刚 | 8h | 8h |
| 53 | 1.4.5.2.1.3 | 账户快照快照 | manual | 1d | 2017-09-04 A | 2017-09-04 A | 100% |  |  |  |  | 吴小刚 | 8h | 8h |
| 54 | 1.4.5.2.1.4 | 标签设置 | manual | 1d | 2017-09-04 A | 2017-09-04 A | 100% |  |  |  |  | 吴小刚 | 8h | 8h |
| 55 | 1.4.5.2.1.5 | 黑名单设置 | manual | 1d | 2017-09-04 A | 2017-09-04 A | 100% |  |  |  |  | 吴小刚 | 8h | 8h |
| 56 | 1.4.5.2.1.6 | 登录日志 | manual | 1d | 2017-09-04 A | 2017-09-04 A | 100% |  |  |  |  | 吴小刚 | 8h | 8h |
| 57 | 1.4.5.2.1.7 | 网签协议记录 | manual | 1d | 2017-09-04 A | 2017-09-04 A | 100% |  |  |  |  | 吴小刚 | 8h | 8h |
| 58 | 1.4.5.2.2 | 业务类型 | manual | 1d | 2017-09-04 A | 2017-09-04 A | 100% |  |  |  |  | 吴小刚 | 8h | 8h |
| 59 | 1.4.5.2.3 | 标签管理 | manual | 1d | 2017-09-04 A | 2017-09-04 A | 100% |  |  |  |  | 吴小刚 | 8h | 8h |

| ID | WBS | Task | Type | Duration | Start | Finish | Complete | Remaining | Actual start | Total slack | Constraint | Resources | Work | Actual work |
| --- | --- | --- | --- | --- | --- | --- | --- | --- | --- | --- | --- | --- | --- | --- |
| 60 | 1.4.5.2.4 | **档案模板管理** |  | 1d | 2017-09-04 A | 2017-09-04 A | 100% |  |  |  |  | 吴小刚 | 16h | 16h |
| 61 | 1.4.5.2.4.1 | 模板属性 | manual | 1d | 2017-09-04 A | 2017-09-04 A | 100% |  |  |  |  | 吴小刚 | 8h | 8h |
| 62 | 1.5 | **用户/渠道商** |  | 26d | 2017-08-07 A | 2017-09-11 | 88% | 3.06d |  |  |  |  | 448h | 432h |
| 63 | 1.5.1 | 需求分析 | manual | 2d | 2017-08-07 A | 2017-08-08 A | 100% |  |  |  |  | 李林 | 16h | 16h |
| 64 | 1.5.2 | 方案设计 | manual | 2d | 2017-08-09 A | 2017-08-10 A | 100% |  |  |  |  | 李林 | 16h | 16h |
| 65 | 1.5.3 | 数据模型 | manual | 2d | 2017-08-11 A | 2017-08-14 A | 100% |  |  |  |  | 李林 | 16h | 16h |
| 66 | 1.5.4 | api文档编写 | manual | 5d | 2017-09-11 A | 2017-09-15 | 60% | 2d |  |  |  | 李林 | 40h | 24h |
| 67 | 1.5.5 | **功能开发** |  | 18d | 2017-08-15 | 2017-09-07 A | 100% |  | 2017-08-14 |  |  | 李林 | 360h | 360h |
| 68 | 1.5.5.1 | **前台** |  | 8d | 2017-08-15 A | 2017-08-24 A | 100% |  |  |  |  | 李林 | 88h | 88h |
| 69 | 1.5.5.1.1 | 登录/登出 | manual | 1d | 2017-08-15 A | 2017-08-15 A | 100% |  |  |  |  | 李林 | 8h | 8h |
| 70 | 1.5.5.1.2 | 找回密码 | manual | 1d | 2017-08-15 A | 2017-08-15 A | 100% |  |  |  |  | 李林 | 8h | 8h |
| 71 | 1.5.5.1.3 | 信息设置 | manual | 1d | 2017-08-15 A | 2017-08-15 A | 100% |  |  |  |  | 李林 | 8h | 8h |
| 72 | 1.5.5.2 | **后台** |  | 10d | 2017-08-14 A | 2017-08-25 A | 100% |  |  |  |  | 李林 | 128h | 128h |
| 73 | 1.5.5.2.1 | **渠道商维护** |  | 3d | 2017-08-14 A | 2017-08-16 A | 100% |  |  |  |  | 李林 | 32h | 32h |
| 74 | 1.5.5.2.1.1 | 批量导入 | manual | 1d | 2017-08-15 A | 2017-08-15 A | 100% |  |  |  |  | 李林 | 8h | 8h |
| 75 | 1.5.5.2.2 | 渠道商分类 | manual | 2d | 2017-08-17 A | 2017-08-18 A | 100% |  |  |  |  | 李林 | 16h | 16h |
| 76 | 2 | **账户/系统** |  | 23d? | 2017-09-13 | 2017-10-13 |  |  |  | 0d |  |  | 2768h |  |
| 77 | 2.1 | 需求分析 |  | 6d | 2017-09-13 | 2017-09-20 |  |  |  | 17d |  | 李林; 吴小刚 | 96h |  |
| 78 | 2.2 | 方案设计 |  | 5d | 2017-09-25 | 2017-09-29 |  |  |  | 10d | start no earlier than 2017-09-25 | 李林; 吴小刚 | 80h |  |
| 79 | 2.3 | 数据模型 |  | 5d | 2017-10-09 | 2017-10-13 |  |  |  | 0d | start no earlier than 2017-10-09 | 李林; 吴小刚 | 80h |  |
| 80 | 2.4 | **功能开发** |  | 7d? | 2017-09-13 | 2017-09-21 |  |  |  |  |  | 李林; 吴小刚 | 2512h |  |
| 81 | 2.4.1 | **业务接口** |  | 1d? | 2017-09-13 | 2017-09-13 |  |  |  |  |  | 李林; 吴小刚 | 1360h |  |
| 82 | 2.4.1.1 | **业务类** |  | 1d? | 2017-09-13 | 2017-09-13 |  |  |  |  |  | 李林; 吴小刚 | 272h |  |
| 83 | 2.4.1.1.1 | 开户 | manual | 1d? | 2017-09-13 | 2017-09-13 |  |  |  |  |  | 李林; 吴小刚 | 16h |  |
| 84 | 2.4.1.1.2 | 设置密码 | manual | 1d? | 2017-09-13 | 2017-09-13 |  |  |  |  |  | 李林; 吴小刚 | 16h |  |
| 85 | 2.4.1.1.3 | 修改密码 | manual | 1d? | 2017-09-13 | 2017-09-13 |  |  |  |  |  | 李林; 吴小刚 | 16h |  |
| 86 | 2.4.1.1.4 | 实名认证 | manual | 1d? | 2017-09-13 | 2017-09-13 |  |  |  |  |  | 李林; 吴小刚 | 16h |  |
| 87 | 2.4.1.1.5 | 鉴权认证 | manual | 1d? | 2017-09-13 | 2017-09-13 |  |  |  |  |  | 李林; 吴小刚 | 16h |  |
| 88 | 2.4.1.1.6 | 授权扣款 | manual | 1d? | 2017-09-13 | 2017-09-13 |  |  |  |  |  | 李林; 吴小刚 | 16h |  |
| 89 | 2.4.1.1.7 | 绑卡 | manual | 1d? | 2017-09-13 | 2017-09-13 |  |  |  |  |  | 李林; 吴小刚 | 16h |  |
| 90 | 2.4.1.1.8 | 充值 | manual | 1d? | 2017-09-13 | 2017-09-13 |  |  |  |  |  | 李林; 吴小刚 | 16h |  |
| 91 | 2.4.1.1.9 | 提现 | manual | 1d? | 2017-09-13 | 2017-09-13 |  |  |  |  |  | 李林; 吴小刚 | 16h |  |
| 92 | 2.4.1.1.10 | 冻结 | manual | 1d? | 2017-09-13 | 2017-09-13 |  |  |  |  |  | 李林; 吴小刚 | 16h |  |
| 93 | 2.4.1.1.11 | 解冻 | manual | 1d? | 2017-09-13 | 2017-09-13 |  |  |  |  |  | 李林; 吴小刚 | 16h |  |
| 94 | 2.4.1.1.12 | 投资 | manual | 1d? | 2017-09-13 | 2017-09-13 |  |  |  |  |  | 李林; 吴小刚 | 16h |  |
| 95 | 2.4.1.1.13 | 还款 | manual | 1d? | 2017-09-13 | 2017-09-13 |  |  |  |  |  | 李林; 吴小刚 | 16h |  |
| 96 | 2.4.1.1.14 | 退款 | manual | 1d? | 2017-09-13 | 2017-09-13 |  |  |  |  |  | 李林; 吴小刚 | 16h |  |
| 97 | 2.4.1.1.15 | 代收 | manual | 1d? | 2017-09-13 | 2017-09-13 |  |  |  |  |  | 李林; 吴小刚 | 16h |  |
| 98 | 2.4.1.1.16 | 代付 | manual | 1d? | 2017-09-13 | 2017-09-13 |  |  |  |  |  | 李林; 吴小刚 | 16h |  |

| ID | WBS | Task | Type | Duration | Start | Finish | Resources | Work |
| --- | --- | --- | --- | --- | --- | --- | --- | --- |
| 99 | 2.4.1.2 | **查询类** |  | 1d? | 2017-09-13 | 2017-09-13 | 李林; 吴小刚 | 208h |
| 100 | 2.4.1.2.1 | 资金明细查询 | manual | 1d? | 2017-09-13 | 2017-09-13 | 李林; 吴小刚 | 16h |
| 101 | 2.4.1.2.2 | 交易查询 | manual | 1d? | 2017-09-13 | 2017-09-13 | 李林; 吴小刚 | 16h |
| 102 | 2.4.1.2.3 | 充值查询 | manual | 1d? | 2017-09-13 | 2017-09-13 | 李林; 吴小刚 | 16h |
| 103 | 2.4.1.2.4 | 提现查询 | manual | 1d? | 2017-09-13 | 2017-09-13 | 李林; 吴小刚 | 16h |
| 104 | 2.4.1.2.5 | 退款查询 | manual | 1d? | 2017-09-13 | 2017-09-13 | 李林; 吴小刚 | 16h |
| 105 | 2.4.1.2.6 | 代收查询 | manual | 1d? | 2017-09-13 | 2017-09-13 | 李林; 吴小刚 | 16h |
| 106 | 2.4.1.2.7 | 代付查询 | manual | 1d? | 2017-09-13 | 2017-09-13 | 李林; 吴小刚 | 16h |
| 107 | 2.4.1.2.8 | 结果查询 | manual | 1d? | 2017-09-13 | 2017-09-13 | 李林; 吴小刚 | 16h |
| 108 | 2.4.1.2.9 | 余额查询 | manual | 1d? | 2017-09-13 | 2017-09-13 | 李林; 吴小刚 | 16h |
| 109 | 2.4.1.2.10 | 会员查询 | manual | 1d? | 2017-09-13 | 2017-09-13 | 李林; 吴小刚 | 16h |
| 110 | 2.4.1.2.11 | 认证信息查询 | manual | 1d? | 2017-09-13 | 2017-09-13 | 李林; 吴小刚 | 16h |
| 111 | 2.4.1.2.12 | 银行卡查询 | manual | 1d? | 2017-09-13 | 2017-09-13 | 李林; 吴小刚 | 16h |
| 112 | 2.4.1.3 | **账户类** |  | 1d? | 2017-09-13 | 2017-09-13 | 李林; 吴小刚 | 176h |
| 113 | 2.4.1.3.1 | 个人账户 | manual | 1d? | 2017-09-13 | 2017-09-13 | 李林; 吴小刚 | 16h |
| 114 | 2.4.1.3.2 | 企业账户 | manual | 1d? | 2017-09-13 | 2017-09-13 | 李林; 吴小刚 | 16h |
| 115 | 2.4.1.3.3 | 借款人账户 | manual | 1d? | 2017-09-13 | 2017-09-13 | 李林; 吴小刚 | 16h |
| 116 | 2.4.1.3.4 | 投资人账户 | manual | 1d? | 2017-09-13 | 2017-09-13 | 李林; 吴小刚 | 16h |
| 117 | 2.4.1.3.5 | 平台账户 | manual | 1d? | 2017-09-13 | 2017-09-13 | 李林; 吴小刚 | 16h |
| 118 | 2.4.1.3.6 | 担保方账户 | manual | 1d? | 2017-09-13 | 2017-09-13 | 李林; 吴小刚 | 16h |
| 119 | 2.4.1.3.7 | 保证金账户 | manual | 1d? | 2017-09-13 | 2017-09-13 | 李林; 吴小刚 | 16h |
| 120 | 2.4.1.3.8 | 冻结账户 | manual | 1d? | 2017-09-13 | 2017-09-13 | 李林; 吴小刚 | 16h |
| 121 | 2.4.1.3.9 | 内部中间收款账户 | manual | 1d? | 2017-09-13 | 2017-09-13 | 李林; 吴小刚 | 16h |
| 122 | 2.4.1.3.10 | 内部中间还款账户 | manual | 1d? | 2017-09-13 | 2017-09-13 | 李林; 吴小刚 | 16h |

| ID | WBS | Task | Type | Duration | Start | Finish | Resources | Work |
| --- | --- | --- | --- | --- | --- | --- | --- | --- |
| 123 | 2.4.1.4 | **会员类** |  | 1d? | 2017-09-13 | 2017-09-13 | 李林; 吴小刚 | 208h |
| 124 | 2.4.1.4.1 | 创建激活会员接口 | manual | 1d? | 2017-09-13 | 2017-09-13 | 李林; 吴小刚 | 16h |
| 125 | 2.4.1.4.2 | 设置实名信息接口 | manual | 1d? | 2017-09-13 | 2017-09-13 | 李林; 吴小刚 | 16h |
| 126 | 2.4.1.4.3 | 绑定认证信息接口 | manual | 1d? | 2017-09-13 | 2017-09-13 | 李林; 吴小刚 | 16h |
| 127 | 2.4.1.4.4 | 解绑认证信息接口 | manual | 1d? | 2017-09-13 | 2017-09-13 | 李林; 吴小刚 | 16h |
| 128 | 2.4.1.4.5 | 查询认证信息接口 | manual | 1d? | 2017-09-13 | 2017-09-13 | 李林; 吴小刚 | 16h |
| 129 | 2.4.1.4.6 | 绑定银行卡接口 | manual | 1d? | 2017-09-13 | 2017-09-13 | 李林; 吴小刚 | 16h |
| 130 | 2.4.1.4.7 | 解绑银行卡接口 | manual | 1d? | 2017-09-13 | 2017-09-13 | 李林; 吴小刚 | 16h |
| 131 | 2.4.1.4.8 | 查询银行卡接口 | manual | 1d? | 2017-09-13 | 2017-09-13 | 李林; 吴小刚 | 16h |
| 132 | 2.4.1.4.9 | 查询余额接口 | manual | 1d? | 2017-09-13 | 2017-09-13 | 李林; 吴小刚 | 16h |
| 133 | 2.4.1.4.10 | 查询收支明细接口 | manual | 1d? | 2017-09-13 | 2017-09-13 | 李林; 吴小刚 | 16h |
| 134 | 2.4.1.4.11 | 冻结余额接口 | manual | 1d? | 2017-09-13 | 2017-09-13 | 李林; 吴小刚 | 16h |
| 135 | 2.4.1.4.12 | 解冻余额接口 | manual | 1d? | 2017-09-13 | 2017-09-13 | 李林; 吴小刚 | 16h |
| 136 | 2.4.1.5 | **增值类** |  | 1d? | 2017-09-13 | 2017-09-13 | 李林; 吴小刚 | 128h |
| 137 | 2.4.1.5.1 | 货币基金账户 | manual | 1d? | 2017-09-13 | 2017-09-13 | 李林; 吴小刚 | 16h |
| 138 | 2.4.1.5.2 | 货币基金选择 | manual | 1d? | 2017-09-13 | 2017-09-13 | 李林; 吴小刚 | 16h |
| 139 | 2.4.1.5.3 | 自动转入 | manual | 1d? | 2017-09-13 | 2017-09-13 | 李林; 吴小刚 | 16h |
| 140 | 2.4.1.5.4 | 自动赎回到账户 | manual | 1d? | 2017-09-13 | 2017-09-13 | 李林; 吴小刚 | 16h |
| 141 | 2.4.1.5.5 | 自动赎回到卡 | manual | 1d? | 2017-09-13 | 2017-09-13 | 李林; 吴小刚 | 16h |
| 142 | 2.4.1.5.6 | 自动赎回份额投资 | manual | 1d? | 2017-09-13 | 2017-09-13 | 李林; 吴小刚 | 16h |
| 143 | 2.4.1.5.7 | 收益自动转入继续财富增值 | manual | 1d? | 2017-09-13 | 2017-09-13 | 李林; 吴小刚 | 16h |
| 144 | 2.4.1.6 | **交易类** |  | 1d? | 2017-09-13 | 2017-09-13 | 李林; 吴小刚 | 352h |
| 145 | 2.4.1.6.1 | **订单处理结果类** |  | 1d? | 2017-09-13 | 2017-09-13 | 李林; 吴小刚 | 96h |
| 146 | 2.4.1.6.1.1 | 交易结果通知接口 | manual | 1d? | 2017-09-13 | 2017-09-13 | 李林; 吴小刚 | 16h |
| 147 | 2.4.1.6.1.2 | 退款结果通知接口 | manual | 1d? | 2017-09-13 | 2017-09-13 | 李林; 吴小刚 | 16h |
| 148 | 2.4.1.6.1.3 | 充值结果通知接口 | manual | 1d? | 2017-09-13 | 2017-09-13 | 李林; 吴小刚 | 16h |
| 149 | 2.4.1.6.1.4 | 提现结果通知接口 | manual | 1d? | 2017-09-13 | 2017-09-13 | 李林; 吴小刚 | 16h |
| 150 | 2.4.1.6.1.5 | 企业会员审核结果通知接口 | manual | 1d? | 2017-09-13 | 2017-09-13 | 李林; 吴小刚 | 16h |
| 151 | 2.4.1.6.2 | 创建托管代收交易接口 | manual | 1d? | 2017-09-13 | 2017-09-13 | 李林; 吴小刚 | 16h |
| 152 | 2.4.1.6.3 | 创建单笔托管代付交易接口 | manual | 1d? | 2017-09-13 | 2017-09-13 | 李林; 吴小刚 | 16h |
| 153 | 2.4.1.6.4 | 创建批量托管代付交易接口 | manual | 1d? | 2017-09-13 | 2017-09-13 | 李林; 吴小刚 | 16h |
| 154 | 2.4.1.6.5 | 托管交易支付接口 | manual | 1d? | 2017-09-13 | 2017-09-13 | 李林; 吴小刚 | 16h |
| 155 | 2.4.1.6.6 | 支付结果查询接口 | manual | 1d? | 2017-09-13 | 2017-09-13 | 李林; 吴小刚 | 16h |
| 156 | 2.4.1.6.7 | 托管交易查询接口 | manual | 1d? | 2017-09-13 | 2017-09-13 | 李林; 吴小刚 | 16h |
| 157 | 2.4.1.6.8 | 托管交易批次查询接口 | manual | 1d? | 2017-09-13 | 2017-09-13 | 李林; 吴小刚 | 16h |
| 158 | 2.4.1.6.9 | 托管退款接口 | manual | 1d? | 2017-09-13 | 2017-09-13 | 李林; 吴小刚 | 16h |
| 159 | 2.4.1.6.10 | 托管退款查询接口 | manual | 1d? | 2017-09-13 | 2017-09-13 | 李林; 吴小刚 | 16h |
| 160 | 2.4.1.6.11 | 托管充值接口 | manual | 1d? | 2017-09-13 | 2017-09-13 | 李林; 吴小刚 | 16h |
| 161 | 2.4.1.6.12 | 托管充值查询接口 | manual | 1d? | 2017-09-13 | 2017-09-13 | 李林; 吴小刚 | 16h |
| 162 | 2.4.1.6.13 | 托管提现接口 | manual | 1d? | 2017-09-13 | 2017-09-13 | 李林; 吴小刚 | 16h |
| 163 | 2.4.1.6.14 | 托管提现查询接口 | manual | 1d? | 2017-09-13 | 2017-09-13 | 李林; 吴小刚 | 16h |
| 164 | 2.4.1.6.15 | 转账接口 | manual | 1d? | 2017-09-13 | 2017-09-13 | 李林; 吴小刚 | 16h |
| 165 | 2.4.1.6.16 | 支付推进接口 | manual | 1d? | 2017-09-13 | 2017-09-13 | 李林; 吴小刚 | 16h |

| ID | WBS | Task | Type | Duration | Start | Finish | Total slack | Resources | Work |
| --- | --- | --- | --- | --- | --- | --- | --- | --- | --- |
| 166 | 2.4.2 | **前台** |  | 4d? | 2017-09-13 | 2017-09-18 |  | 李林; 吴小刚 | 480h |
| 167 | 2.4.2.1 | **我的账户** |  | 1d? | 2017-09-13 | 2017-09-13 |  | 李林; 吴小刚 | 208h |
| 168 | 2.4.2.1.1 | **个人主页** |  | 1d? | 2017-09-13 | 2017-09-13 | 0d | 李林; 吴小刚 | 64h |
| 169 | 2.4.2.1.1.1 | 余额 | manual | 1d? | 2017-09-13 | 2017-09-13 |  | 李林; 吴小刚 | 16h |
| 170 | 2.4.2.1.1.2 | 我的投资 | manual | 1d? | 2017-09-13 | 2017-09-13 |  | 李林; 吴小刚 | 16h |
| 171 | 2.4.2.1.1.3 | 我的借款 | manual | 1d? | 2017-09-13 | 2017-09-13 |  | 李林; 吴小刚 | 16h |
| 172 | 2.4.2.1.2 | **个人设置** |  | 1d? | 2017-09-13 | 2017-09-13 |  | 李林; 吴小刚 | 128h |
| 173 | 2.4.2.1.2.1 | 个人信息、工作信息、银行卡绑定、密码进行设置与修改 | manual | 1d? | 2017-09-13 | 2017-09-13 |  | 李林; 吴小刚 | 16h |
| 174 | 2.4.2.1.2.2 | **信息认证** |  | 1d? | 2017-09-13 | 2017-09-13 |  | 李林; 吴小刚 | 80h |
| 175 | 2.4.2.1.2.2.1 | 实名认证(ID5) | manual | 1d? | 2017-09-13 | 2017-09-13 |  | 李林; 吴小刚 | 16h |
| 176 | 2.4.2.1.2.2.2 | 学历认证 | manual | 1d? | 2017-09-13 | 2017-09-13 |  | 李林; 吴小刚 | 16h |
| 177 | 2.4.2.1.2.2.3 | 手机认证 | manual | 1d? | 2017-09-13 | 2017-09-13 |  | 李林; 吴小刚 | 16h |
| 178 | 2.4.2.1.2.2.4 | 视频认证 | manual | 1d? | 2017-09-13 | 2017-09-13 |  | 李林; 吴小刚 | 16h |
| 179 | 2.4.2.1.2.3 | 信用认证 | manual | 1d? | 2017-09-13 | 2017-09-13 |  | 李林; 吴小刚 | 16h |
| 180 | 2.4.2.2 | **借款管理** |  | 1d? | 2017-09-13 | 2017-09-13 |  | 李林; 吴小刚 | 80h |
| 181 | 2.4.2.2.1 | 发起借款 | manual | 1d? | 2017-09-13 | 2017-09-13 |  | 李林; 吴小刚 | 16h |
| 182 | 2.4.2.2.2 | 还款管理 | manual | 1d? | 2017-09-13 | 2017-09-13 |  | 李林; 吴小刚 | 16h |
| 183 | 2.4.2.2.3 | 已发布的借款 | manual | 1d? | 2017-09-13 | 2017-09-13 |  | 李林; 吴小刚 | 16h |
| 184 | 2.4.2.2.4 | 贷款统计 | manual | 1d? | 2017-09-13 | 2017-09-13 |  | 李林; 吴小刚 | 16h |
| 185 | 2.4.2.3 | **理财管理** |  | 1d? | 2017-09-13 | 2017-09-13 |  | 李林; 吴小刚 | 80h |
| 186 | 2.4.2.3.1 | 我的投标 | manual | 1d? | 2017-09-13 | 2017-09-13 |  | 李林; 吴小刚 | 16h |
| 187 | 2.4.2.3.2 | 我关注的项目 | manual | 1d? | 2017-09-13 | 2017-09-13 |  | 李林; 吴小刚 | 16h |
| 188 | 2.4.2.3.3 | 理财统计 | manual | 1d? | 2017-09-13 | 2017-09-13 |  | 李林; 吴小刚 | 16h |
| 189 | 2.4.2.3.4 | 自动投标 | manual | 1d? | 2017-09-13 | 2017-09-13 |  | 李林; 吴小刚 | 16h |

| ID | WBS | Task | Type | Duration | Start | Finish | Resources | Work |
| --- | --- | --- | --- | --- | --- | --- | --- | --- |
| 190 | 2.4.2.4 | **债权转让** |  | 1d? | 2017-09-13 | 2017-09-13 | 李林; 吴小刚 | 48h |
| 191 | 2.4.2.4.1 | 债权转让 | manual | 1d? | 2017-09-13 | 2017-09-13 | 李林; 吴小刚 | 16h |
| 192 | 2.4.2.4.2 | 债权竞拍 | manual | 1d? | 2017-09-13 | 2017-09-13 | 李林; 吴小刚 | 16h |
| 193 | 2.4.3 | **后台** |  | 1d? | 2017-09-13 | 2017-09-13 | 李林; 吴小刚 | 560h |
| 194 | 2.4.3.1 | **审核管理** |  | 1d? | 2017-09-13 | 2017-09-13 | 李林; 吴小刚 | 112h |
| 195 | 2.4.3.1.1 | 额度申请管理 | manual | 1d? | 2017-09-13 | 2017-09-13 | 李林; 吴小刚 | 16h |
| 196 | 2.4.3.1.2 | 债权管理 | manual | 1d? | 2017-09-13 | 2017-09-13 | 李林; 吴小刚 | 16h |
| 197 | 2.4.3.1.3 | 正在转让的债权 | manual | 1d? | 2017-09-13 | 2017-09-13 | 李林; 吴小刚 | 16h |
| 198 | 2.4.3.1.4 | 成功转让的债权 | manual | 1d? | 2017-09-13 | 2017-09-13 | 李林; 吴小刚 | 16h |
| 199 | 2.4.3.1.5 | 申请正在转让的债权 | manual | 1d? | 2017-09-13 | 2017-09-13 | 李林; 吴小刚 | 16h |
| 200 | 2.4.3.1.6 | 失败的债权 | manual | 1d? | 2017-09-13 | 2017-09-13 | 李林; 吴小刚 | 16h |
| 201 | 2.4.3.2 | **财务管理** |  | 1d? | 2017-09-13 | 2017-09-13 | 李林; 吴小刚 | 112h |
| 202 | 2.4.3.2.1 | 充值提现审核 | manual | 1d? | 2017-09-13 | 2017-09-13 | 李林; 吴小刚 | 16h |
| 203 | 2.4.3.2.2 | 银行卡管理 | manual | 1d? | 2017-09-13 | 2017-09-13 | 李林; 吴小刚 | 16h |
| 204 | 2.4.3.2.3 | 用户资金管理 | manual | 1d? | 2017-09-13 | 2017-09-13 | 李林; 吴小刚 | 16h |
| 205 | 2.4.3.2.4 | 充值管理 | manual | 1d? | 2017-09-13 | 2017-09-13 | 李林; 吴小刚 | 16h |
| 206 | 2.4.3.2.5 | 充值记录 | manual | 1d? | 2017-09-13 | 2017-09-13 | 李林; 吴小刚 | 16h |
| 207 | 2.4.3.2.6 | 风险保障金 | manual | 1d? | 2017-09-13 | 2017-09-13 | 李林; 吴小刚 | 16h |
| 208 | 2.4.3.3 | **审核管理** |  | 1d? | 2017-09-13 | 2017-09-13 | 李林; 吴小刚 | 128h |
| 209 | 2.4.3.3.1 | 额度申请管理 | manual | 1d? | 2017-09-13 | 2017-09-13 | 李林; 吴小刚 | 16h |
| 210 | 2.4.3.3.2 | 基本信息审核 | manual | 1d? | 2017-09-13 | 2017-09-13 | 李林; 吴小刚 | 16h |
| 211 | 2.4.3.3.3 | 新用户认证资料 | manual | 1d? | 2017-09-13 | 2017-09-13 | 李林; 吴小刚 | 16h |
| 212 | 2.4.3.3.4 | 基本信用资料认证 | manual | 1d? | 2017-09-13 | 2017-09-13 | 李林; 吴小刚 | 16h |
| 213 | 2.4.3.3.5 | 可选资料认证 | manual | 1d? | 2017-09-13 | 2017-09-13 | 李林; 吴小刚 | 16h |
| 214 | 2.4.3.3.6 | 认证资料统计 | manual | 1d? | 2017-09-13 | 2017-09-13 | 李林; 吴小刚 | 16h |
| 215 | 2.4.3.3.7 | 手机号码更改 | manual | 1d? | 2017-09-13 | 2017-09-13 | 李林; 吴小刚 | 16h |

| ID | WBS | Task | Type | Duration | Start | Finish | Resources | Work |
| --- | --- | --- | --- | --- | --- | --- | --- | --- |
| 216 | 2.4.3.4 | **借款管理** |  | 1d? | 2017-09-13 | 2017-09-13 | 李林; 吴小刚 | 96h |
| 217 | 2.4.3.4.1 | 初审中的借款 | manual | 1d? | 2017-09-13 | 2017-09-13 | 李林; 吴小刚 | 16h |
| 218 | 2.4.3.4.2 | 招标中的借款 | manual | 1d? | 2017-09-13 | 2017-09-13 | 李林; 吴小刚 | 16h |
| 219 | 2.4.3.4.3 | 满标审核 | manual | 1d? | 2017-09-13 | 2017-09-13 | 李林; 吴小刚 | 16h |
| 220 | 2.4.3.4.4 | 流标的借款 | manual | 1d? | 2017-09-13 | 2017-09-13 | 李林; 吴小刚 | 16h |
| 221 | 2.4.3.4.5 | 所有的借款 | manual | 1d? | 2017-09-13 | 2017-09-13 | 李林; 吴小刚 | 16h |
| 222 | 2.4.3.5 | **贷后管理** |  | 1d? | 2017-09-13 | 2017-09-13 | 李林; 吴小刚 | 96h |
| 223 | 2.4.3.5.1 | 待收款 | manual | 1d? | 2017-09-13 | 2017-09-13 | 李林; 吴小刚 | 16h |
| 224 | 2.4.3.5.2 | 逾期的还款 | manual | 1d? | 2017-09-13 | 2017-09-13 | 李林; 吴小刚 | 16h |
| 225 | 2.4.3.5.3 | 逾期垫付 | manual | 1d? | 2017-09-13 | 2017-09-13 | 李林; 吴小刚 | 16h |
| 226 | 2.4.3.5.4 | 最近3天的还款 | manual | 1d? | 2017-09-13 | 2017-09-13 | 李林; 吴小刚 | 16h |
| 227 | 2.4.3.5.5 | 已还款 | manual | 1d? | 2017-09-13 | 2017-09-13 | 李林; 吴小刚 | 16h |
